Schedule from MS Project, 2022-03-08 to 2022-06-02, costs in $, A marks actual dates.

## Calendars

- Standard: Mon-Fri 08:00-12:00, 13:00-17:00; Sat-Sun off. Exceptions (off unless hours are given): 2022-05-02 to 2022-05-03 (Nghỉ bù 30/04 - 01/05).

## Resources

| Resource | Rate |
| --- | --- |
| Đỗ Hải | 10 |
| Võ Thành Đô | 10 |
| Nguyễn Nhựt Hào | 10 |
| Trương Nguyễn Trường Duy | 10 |
| Võ Văn Toán | 5 |
| Nguyễn Ngọc Toản | 5 |
| Nguyễn Văn Cương | 5 |
| Nguyễn Thị Linh | 5 |
| Lê Thị Đinh | 5 |
| Nguyễn Phước | 5 |
| Di chuyển |  |
| Ăn uống |  |
| Chỗ ở |  |
| Phần mềm |  |
| Phần cứng |  |
| Thuê thiết bị |  |

## Schedule

| ID | WBS | Task | Duration | Start | Finish | Predecessors | Complete | Baseline start | Baseline finish | Baseline duration | Baseline 1 start | Baseline 1 finish | Resources | Work | Actual work | Cost | Baseline cost | Actual cost |
| --- | --- | --- | --- | --- | --- | --- | --- | --- | --- | --- | --- | --- | --- | --- | --- | --- | --- | --- |
| 1 | 1 | **Dự Án Thiết Kế Web Quản Lý Du Lịch** | 61d | 2022-03-08 A | 2022-06-02 A |  | 100% | 2022-03-08 | 2022-05-30 | 60d | 2022-03-08 | 2022-06-01 |  | 1264h | 1264h | 28,070 | 28,030 | 7,880 |
| 2 | 1.1 | **Kế hoạch** | 5d | 2022-03-08 A | 2022-03-14 A |  | 100% | 2022-03-08 | 2022-03-14 | 5d | 2022-03-08 | 2022-03-14 |  | 96h | 96h | 1,070 | 1,070 | 720 |
| 3 | 1.1.1 | Xác định xem loại hình website du lịch này đang khai thác đã có theme, tông màu phù hợp | 1d | 2022-03-08 A | 2022-03-08 A |  | 100% | 2022-03-08 | 2022-03-08 | 1d | 2022-03-08 | 2022-03-08 | Đỗ Hải | 8h | 8h | 80 | 80 | 80 |
| 4 | 1.1.2 | Lập danh sách các chức năng website du lịch | 1d | 2022-03-09 A | 2022-03-09 A | 3 | 100% | 2022-03-09 | 2022-03-09 | 1d | 2022-03-09 | 2022-03-09 | Võ Thành Đô | 8h | 8h | 80 | 80 | 80 |
| 5 | 1.1.3 | Lập kế hoạch sử dụng chi phí | 1d | 2022-03-09 A | 2022-03-09 A | 3 | 100% | 2022-03-09 | 2022-03-09 | 1d | 2022-03-09 | 2022-03-09 | Nguyễn Nhựt Hào | 8h | 8h | 80 | 80 | 80 |
| 6 | 1.1.4 | Khảo sát người dùng về những điều mà họ muốn website phải có | 1d | 2022-03-09 A | 2022-03-09 A | 3 | 100% | 2022-03-09 | 2022-03-09 | 1d | 2022-03-09 | 2022-03-09 | Trương Nguyễn Trường Duy; Ăn uống [0.1%]; Di chuyển [0.1%] | 8h | 8h | 140 | 140 | 80 |
| 7 | 1.1.5 | Phỏng vấn khách hàng | 1d | 2022-03-09 A | 2022-03-09 A | 3 | 100% | 2022-03-09 | 2022-03-09 | 1d | 2022-03-09 | 2022-03-09 | Đỗ Hải; Di chuyển [0.1%]; Chỗ ở [0.1%]; Ăn uống [0.1%] | 8h | 8h | 250 | 250 | 80 |
| 8 | 1.1.6 | **Lập phạm vi dự án** | 3d | 2022-03-09 A | 2022-03-11 A | 3 | 100% | 2022-03-09 | 2022-03-11 | 3d | 2022-03-09 | 2022-03-11 | Nguyễn Thị Linh | 48h | 48h | 240 | 240 | 240 |
| 9 | 1.1.6.1 | **Lập phạm vi rủi ro** | 1d | 2022-03-09 A | 2022-03-09 A |  | 100% | 2022-03-09 | 2022-03-09 | 1d | 2022-03-09 | 2022-03-09 |  | 8h | 8h | 40 | 40 | 40 |
| 10 | 1.1.6.1.1 | Giả định rủi ro | 0.5d | 2022-03-09 A | 2022-03-09 A | 3 | 100% | 2022-03-09 | 2022-03-09 | 0.5d | 2022-03-09 | 2022-03-09 | Nguyễn Ngọc Toản | 4h | 4h | 20 | 20 | 20 |
| 11 | 1.1.6.1.2 | Giải pháp xử lý rủi ro | 0.5d | 2022-03-09 A | 2022-03-09 A | 10 | 100% | 2022-03-09 | 2022-03-09 | 0.5d | 2022-03-09 | 2022-03-09 | Nguyễn Phước | 4h | 4h | 20 | 20 | 20 |
| 12 | 1.1.6.2 | Lập phạm vi thời gian | 1d | 2022-03-10 A | 2022-03-10 A | 9 | 100% | 2022-03-10 | 2022-03-10 | 1d | 2022-03-10 | 2022-03-10 | Nguyễn Văn Cương | 8h | 8h | 40 | 40 | 40 |
| 13 | 1.1.6.3 | Lập phạm vi chi phí | 1d | 2022-03-11 A | 2022-03-11 A | 12 | 100% | 2022-03-11 | 2022-03-11 | 1d | 2022-03-11 | 2022-03-11 | Võ Văn Toán | 8h | 8h | 40 | 40 | 40 |
| 14 | 1.1.7 | Ký kết hợp đồng | 1d | 2022-03-14 A | 2022-03-14 A | 8 | 100% | 2022-03-14 | 2022-03-14 | 1d | 2022-03-14 | 2022-03-14 | Ăn uống [0.1%]; Chỗ ở [0.1%]; Di chuyển [0.1%]; Đỗ Hải | 8h | 8h | 200 | 200 | 80 |
| 15 | 1.2 | **Xác định** | 14d | 2022-03-15 A | 2022-04-01 A |  | 100% | 2022-03-15 | 2022-04-01 | 14d | 2022-03-15 | 2022-04-01 |  | 144h | 144h | 18,360 | 18,360 | 1,360 |
| 16 | 1.2.1 | **Phát triển yêu cầu** | 2d | 2022-03-15 A | 2022-03-16 A |  | 100% | 2022-03-15 | 2022-03-16 | 2d | 2022-03-15 | 2022-03-16 |  | 32h | 32h | 320 | 320 | 320 |
| 17 | 1.2.1.1 | Xác định yêu cầu cần có của hệ thống | 2d | 2022-03-15 A | 2022-03-16 A | 2 | 100% | 2022-03-15 | 2022-03-16 | 2d | 2022-03-15 | 2022-03-16 | Nguyễn Nhựt Hào | 16h | 16h | 160 | 160 | 160 |
| 18 | 1.2.1.2 | Phân tích dữ liệu đưa vào hệ thống | 2d | 2022-03-15 A | 2022-03-16 A | 2 | 100% | 2022-03-15 | 2022-03-16 | 2d | 2022-03-15 | 2022-03-16 | Trương Nguyễn Trường Duy | 16h | 16h | 160 | 160 | 160 |
| 19 | 1.2.2 | **Phát triển thiết kế mức quan niệm** | 6d | 2022-03-17 A | 2022-03-24 A |  | 100% | 2022-03-17 | 2022-03-24 | 6d | 2022-03-17 | 2022-03-24 |  | 48h | 48h | 480 | 480 | 480 |
| 20 | 1.2.2.1 | Thiết kế dữ liệu mức quan niệm | 3d | 2022-03-17 A | 2022-03-21 A | 16 | 100% | 2022-03-17 | 2022-03-21 | 3d | 2022-03-17 | 2022-03-21 | Võ Thành Đô | 24h | 24h | 240 | 240 | 240 |
| 21 | 1.2.2.2 | Thiết kế quy trình mức quan niệm | 3d | 2022-03-22 A | 2022-03-24 A | 20 | 100% | 2022-03-22 | 2022-03-24 | 3d | 2022-03-22 | 2022-03-24 | Đỗ Hải | 24h | 24h | 240 | 240 | 240 |
| 22 | 1.2.3 | **Phát triển thiết kế kiến trúc** | 2d | 2022-03-25 A | 2022-03-28 A |  | 100% | 2022-03-25 | 2022-03-28 | 2d | 2022-03-25 | 2022-03-28 |  | 16h | 16h | 80 | 80 | 80 |
| 23 | 1.2.3.1 | Đánh giá phương pháp thiết kế web | 1d | 2022-03-25 A | 2022-03-25 A | 19 | 100% | 2022-03-25 | 2022-03-25 | 1d | 2022-03-25 | 2022-03-25 | Lê Thị Đinh | 8h | 8h | 40 | 40 | 40 |
| 24 | 1.2.3.2 | Lựa chọn phương pháp thiết kế web | 1d | 2022-03-28 A | 2022-03-28 A | 23 | 100% | 2022-03-28 | 2022-03-28 | 1d | 2022-03-28 | 2022-03-28 | Nguyễn Ngọc Toản | 8h | 8h | 40 | 40 | 40 |
| 25 | 1.2.4 | Lập hóa đơn nguyên vật liệu | 1d | 2022-03-29 A | 2022-03-29 A | 22 | 100% | 2022-03-29 | 2022-03-29 | 1d | 2022-03-29 | 2022-03-29 | Võ Thành Đô | 8h | 8h | 80 | 80 | 80 |

| ID | WBS | Task | Duration | Start | Finish | Predecessors | Complete | Baseline start | Baseline finish | Baseline duration | Baseline 1 start | Baseline 1 finish | Resources | Work | Actual work | Cost | Baseline cost | Actual cost |
| --- | --- | --- | --- | --- | --- | --- | --- | --- | --- | --- | --- | --- | --- | --- | --- | --- | --- | --- |
| 26 | 1.2.5 | **Mua sắm tài nguyên** | 3d | 2022-03-30 A | 2022-04-01 A |  | 100% | 2022-03-30 | 2022-04-01 | 3d | 2022-03-30 | 2022-04-01 |  | 40h | 40h | 17,400 | 17,400 | 400 |
| 27 | 1.2.5.1 | Thuê nguồn nhân lực | 1d | 2022-03-30 A | 2022-03-30 A | 25 | 100% | 2022-03-30 | 2022-03-30 | 1d | 2022-03-30 | 2022-03-30 | Võ Thành Đô | 8h | 8h | 80 | 80 | 80 |
| 28 | 1.2.5.2 | Mua phần cứng | 2d | 2022-03-31 A | 2022-04-01 A | 27 | 100% | 2022-03-31 | 2022-04-01 | 2d | 2022-03-31 | 2022-04-01 | Đỗ Hải; Phần cứng [0.1%] | 16h | 16h | 10,160 | 10,160 | 160 |
| 29 | 1.2.5.3 | Mua phần mềm | 1d | 2022-03-31 A | 2022-03-31 A | 27 | 100% | 2022-03-31 | 2022-03-31 | 1d | 2022-03-31 | 2022-03-31 | Nguyễn Nhựt Hào; Phần mềm [0.1%] | 8h | 8h | 5,080 | 5,080 | 80 |
| 30 | 1.2.5.4 | Thuê các thiết bị truyền thông | 1d | 2022-03-31 A | 2022-03-31 A | 27 | 100% | 2022-03-31 | 2022-03-31 | 1d | 2022-03-31 | 2022-03-31 | Trương Nguyễn Trường Duy; Thuê thiết bị [0.1%] | 8h | 8h | 2,080 | 2,080 | 80 |
| 31 | 1.3 | **Xây dựng** | 31d | 2022-04-04 A | 2022-05-18 A |  | 100% | 2022-04-04 | 2022-05-16 | 31d | 2022-04-04 | 2022-05-18 |  | 784h | 784h | 4,440 | 4,440 | 4,440 |
| 32 | 1.3.1 | **Thiết kế cơ sở dữ liệu** | 7d | 2022-04-04 A | 2022-04-12 A |  | 100% | 2022-04-04 | 2022-04-12 | 7d | 2022-04-04 | 2022-04-12 |  | 64h | 64h | 400 | 400 | 400 |
| 33 | 1.3.1.1 | Phân tích dữ liệu đưa vào database | 1d | 2022-04-04 A | 2022-04-04 A | 15 | 100% | 2022-04-04 | 2022-04-04 | 1d | 2022-04-04 | 2022-04-04 | Võ Thành Đô | 8h | 8h | 80 | 80 | 80 |
| 34 | 1.3.1.2 | Xây dựng mô hình quan hệ thực thể | 1d | 2022-04-05 A | 2022-04-05 A | 33 | 100% | 2022-04-05 | 2022-04-05 | 1d | 2022-04-05 | 2022-04-05 | Đỗ Hải | 8h | 8h | 80 | 80 | 80 |
| 35 | 1.3.1.3 | **Xây dựng mô hình quan hệ** | 1d | 2022-04-06 A | 2022-04-06 A |  | 100% | 2022-04-06 | 2022-04-06 | 1d | 2022-04-06 | 2022-04-06 |  | 8h | 8h | 40 | 40 | 40 |
| 36 | 1.3.1.3.1 | Xây dựng các bảng dữ liệu | 0.5d | 2022-04-06 A | 2022-04-06 A | 34 | 100% | 2022-04-06 | 2022-04-06 | 0.5d | 2022-04-06 | 2022-04-06 | Lê Thị Đinh | 4h | 4h | 20 | 20 | 20 |
| 37 | 1.3.1.3.2 | Xác định khóa chính các bảng | 0.25d | 2022-04-06 A | 2022-04-06 A | 36 | 100% | 2022-04-06 | 2022-04-06 | 0.25d | 2022-04-06 | 2022-04-06 | Lê Thị Đinh | 2h | 2h | 10 | 10 | 10 |
| 38 | 1.3.1.3.3 | Xác định khóa ngoại các bảng | 0.25d | 2022-04-06 A | 2022-04-06 A | 37 | 100% | 2022-04-06 | 2022-04-06 | 0.25d | 2022-04-06 | 2022-04-06 | Lê Thị Đinh | 2h | 2h | 10 | 10 | 10 |
| 39 | 1.3.1.4 | Phân quyền mức cơ sở dữ liệu | 1d | 2022-04-07 A | 2022-04-07 A | 35 | 100% | 2022-04-07 | 2022-04-07 | 1d | 2022-04-07 | 2022-04-07 | Võ Văn Toán | 8h | 8h | 40 | 40 | 40 |
| 40 | 1.3.1.5 | Viết các trigger cho các bảng dữ liệu | 1d | 2022-04-08 A | 2022-04-08 A | 39 | 100% | 2022-04-08 | 2022-04-08 | 1d | 2022-04-08 | 2022-04-08 | Nguyễn Thị Linh | 8h | 8h | 40 | 40 | 40 |
| 41 | 1.3.1.6 | Viết các procedure, function | 3d | 2022-04-08 A | 2022-04-12 A | 39 | 100% | 2022-04-08 | 2022-04-12 | 3d | 2022-04-08 | 2022-04-12 | Nguyễn Văn Cương | 24h | 24h | 120 | 120 | 120 |
| 42 | 1.3.2 | **Thiết kế giao diện người dùng** | 12d | 2022-04-13 A | 2022-04-28 A |  | 100% | 2022-04-13 | 2022-04-28 | 12d | 2022-04-13 | 2022-04-28 |  | 312h | 312h | 1,880 | 1,880 | 1,880 |
| 43 | 1.3.2.1 | Phác thảo, mô tả màn hình giao diện | 2d | 2022-04-13 A | 2022-04-14 A | 32 | 100% | 2022-04-13 | 2022-04-14 | 2d | 2022-04-13 | 2022-04-14 | Đỗ Hải; Nguyễn Nhựt Hào; Trương Nguyễn Trường Duy; Võ Thành Đô | 64h | 64h | 640 | 640 | 640 |
| 44 | 1.3.2.2 | Chuẩn bị các tài nguyên phụ trợ | 1d | 2022-04-15 A | 2022-04-15 A | 43 | 100% | 2022-04-15 | 2022-04-15 | 1d | 2022-04-15 | 2022-04-15 | Võ Văn Toán | 8h | 8h | 40 | 40 | 40 |
| 45 | 1.3.2.3 | **Thiết kế giao diện và xử lý** | 9d | 2022-04-18 A | 2022-04-28 A |  | 100% | 2022-04-18 | 2022-04-28 | 9d | 2022-04-18 | 2022-04-28 |  | 240h | 240h | 1,200 | 1,200 | 1,200 |
| 46 | 1.3.2.3.1 | Thiết kế giao diện Trang chủ | 6d | 2022-04-18 A | 2022-04-25 A | 44 | 100% | 2022-04-18 | 2022-04-25 | 6d | 2022-04-18 | 2022-04-25 | Lê Thị Đinh | 48h | 48h | 240 | 240 | 240 |
| 47 | 1.3.2.3.2 | Thiết kế giao diện trang Đặt tour | 3d | 2022-04-18 A | 2022-04-20 A | 44 | 100% | 2022-04-18 | 2022-04-20 | 3d | 2022-04-18 | 2022-04-20 | Nguyễn Ngọc Toản | 24h | 24h | 120 | 120 | 120 |
| 48 | 1.3.2.3.3 | Thiết kế giao diện trang Đặt khách sạn/homestay | 3d | 2022-04-18 A | 2022-04-20 A | 44 | 100% | 2022-04-18 | 2022-04-20 | 3d | 2022-04-18 | 2022-04-20 | Nguyễn Phước | 24h | 24h | 120 | 120 | 120 |
| 49 | 1.3.2.3.4 | Thiết kế giao diện trang Travel tips | 3d | 2022-04-18 A | 2022-04-20 A | 44 | 100% | 2022-04-18 | 2022-04-20 | 3d | 2022-04-18 | 2022-04-20 | Nguyễn Văn Cương | 24h | 24h | 120 | 120 | 120 |
| 50 | 1.3.2.3.5 | Thiết kế giao diện trang Đăng nhập/đăng ký | 3d | 2022-04-18 A | 2022-04-20 A | 44 | 100% | 2022-04-18 | 2022-04-20 | 3d | 2022-04-18 | 2022-04-20 | Võ Văn Toán | 24h | 24h | 120 | 120 | 120 |
| 51 | 1.3.2.3.6 | Thiết kế giao diện trang giới thiệu khách sạn/homestay | 3d | 2022-04-18 A | 2022-04-20 A | 44 | 100% | 2022-04-18 | 2022-04-20 | 3d | 2022-04-18 | 2022-04-20 | Nguyễn Thị Linh | 24h | 24h | 120 | 120 | 120 |
| 52 | 1.3.2.3.7 | Thiết kế giao diện trang quản lý | 3d | 2022-04-26 A | 2022-04-28 A | 46 | 100% | 2022-04-26 | 2022-04-28 | 3d | 2022-04-26 | 2022-04-28 | Lê Thị Đinh | 24h | 24h | 120 | 120 | 120 |
| 53 | 1.3.2.3.8 | Thiết kế giao diện trang thanh toán | 3d | 2022-04-21 A | 2022-04-25 A | 47 | 100% | 2022-04-21 | 2022-04-25 | 3d | 2022-04-21 | 2022-04-25 | Nguyễn Ngọc Toản | 24h | 24h | 120 | 120 | 120 |
| 54 | 1.3.2.3.9 | Thiết kế giao diện trang giới thiệu Tour | 3d | 2022-04-21 A | 2022-04-25 A | 50 | 100% | 2022-04-21 | 2022-04-25 | 3d | 2022-04-21 | 2022-04-25 | Võ Văn Toán | 24h | 24h | 120 | 120 | 120 |

| ID | WBS | Task | Duration | Start | Finish | Predecessors | Complete | Baseline start | Baseline finish | Baseline duration | Baseline 1 start | Baseline 1 finish | Resources | Work | Actual work | Cost | Baseline cost | Actual cost |
| --- | --- | --- | --- | --- | --- | --- | --- | --- | --- | --- | --- | --- | --- | --- | --- | --- | --- | --- |
| 55 | 1.3.3 | **Xây dựng các chức năng hệ thống** | 9d | 2022-04-29 A | 2022-05-13 A |  | 100% | 2022-04-29 | 2022-05-11 | 9d | 2022-04-29 | 2022-05-13 |  | 336h | 336h | 1,800 | 1,800 | 1,800 |
| 56 | 1.3.3.1 | Xây dựng chức năng đăng nhập, đăng ký | 3d | 2022-04-29 A | 2022-05-05 A | 42 | 100% | 2022-04-29 | 2022-05-03 | 3d | 2022-04-29 | 2022-05-05 | Đỗ Hải | 24h | 24h | 240 | 240 | 240 |
| 57 | 1.3.3.2 | Xây dựng chức năng đặt tour du lịch | 3d | 2022-04-29 A | 2022-05-05 A | 42 | 100% | 2022-04-29 | 2022-05-03 | 3d | 2022-04-29 | 2022-05-05 | Lê Thị Đinh | 24h | 24h | 120 | 120 | 120 |
| 58 | 1.3.3.3 | Xây dựng chức năng đặt phòng khách sạn, homestay. | 3d | 2022-04-29 A | 2022-05-05 A | 42 | 100% | 2022-04-29 | 2022-05-03 | 3d | 2022-04-29 | 2022-05-05 | Nguyễn Phước | 24h | 24h | 120 | 120 | 120 |
| 59 | 1.3.3.4 | Xây dựng chức năng đánh giá điểm du lịch. | 3d | 2022-04-29 A | 2022-05-05 A | 42 | 100% | 2022-04-29 | 2022-05-03 | 3d | 2022-04-29 | 2022-05-05 | Nguyễn Ngọc Toản | 24h | 24h | 120 | 120 | 120 |
| 60 | 1.3.3.5 | Xây dựng chức năng tìm kiếm tour du lịch. | 3d | 2022-05-06 A | 2022-05-10 A | 58 | 100% | 2022-05-04 | 2022-05-06 | 3d | 2022-05-06 | 2022-05-10 | Nguyễn Phước | 24h | 24h | 120 | 120 | 120 |
| 61 | 1.3.3.6 | Xây dựng chức năng tìm kiếm khách sạn, homestay. | 3d | 2022-04-29 A | 2022-05-05 A | 42 | 100% | 2022-04-29 | 2022-05-03 | 3d | 2022-04-29 | 2022-05-05 | Nguyễn Thị Linh | 24h | 24h | 120 | 120 | 120 |
| 62 | 1.3.3.7 | Xây dựng chức năng đăng Travel tips. | 3d | 2022-04-29 A | 2022-05-05 A | 42 | 100% | 2022-04-29 | 2022-05-03 | 3d | 2022-04-29 | 2022-05-05 | Nguyễn Văn Cương | 24h | 24h | 120 | 120 | 120 |
| 63 | 1.3.3.8 | Xây dựng chức năng thanh toán. | 3d | 2022-04-29 A | 2022-05-05 A | 42 | 100% | 2022-04-29 | 2022-05-03 | 3d | 2022-04-29 | 2022-05-05 | Võ Văn Toán | 24h | 24h | 120 | 120 | 120 |
| 64 | 1.3.3.9 | Xây dựng chức năng quản lý khách sạn. | 3d | 2022-05-06 A | 2022-05-10 A | 62 | 100% | 2022-05-04 | 2022-05-06 | 3d | 2022-05-06 | 2022-05-10 | Nguyễn Văn Cương | 24h | 24h | 120 | 120 | 120 |
| 65 | 1.3.3.10 | Xây dựng chức năng quản lý phòng. | 3d | 2022-05-06 A | 2022-05-10 A | 63 | 100% | 2022-05-04 | 2022-05-06 | 3d | 2022-05-06 | 2022-05-10 | Võ Văn Toán | 24h | 24h | 120 | 120 | 120 |
| 66 | 1.3.3.11 | Xây dựng chức năng quản lý Blog. | 3d | 2022-05-11 A | 2022-05-13 A | 60 | 100% | 2022-05-09 | 2022-05-11 | 3d | 2022-05-11 | 2022-05-13 | Nguyễn Phước | 24h | 24h | 120 | 120 | 120 |
| 67 | 1.3.3.12 | Xây dựng chức năng quản lý comment. | 3d | 2022-05-06 A | 2022-05-10 A | 61 | 100% | 2022-05-04 | 2022-05-06 | 3d | 2022-05-06 | 2022-05-10 | Nguyễn Thị Linh | 24h | 24h | 120 | 120 | 120 |
| 68 | 1.3.3.13 | Xây dựng chức năng quản lý tour. | 3d | 2022-05-06 A | 2022-05-10 A | 59 | 100% | 2022-05-04 | 2022-05-06 | 3d | 2022-05-06 | 2022-05-10 | Nguyễn Ngọc Toản | 24h | 24h | 120 | 120 | 120 |
| 69 | 1.3.3.14 | Xây dựng chức năng quản lý user. | 3d | 2022-05-11 A | 2022-05-13 A | 65 | 100% | 2022-05-09 | 2022-05-11 | 3d | 2022-05-11 | 2022-05-13 | Võ Văn Toán | 24h | 24h | 120 | 120 | 120 |
| 70 | 1.3.4 | Cài đặt hệ thống | 3d | 2022-05-16 A | 2022-05-18 A | 55 | 100% | 2022-05-12 | 2022-05-16 | 3d | 2022-05-16 | 2022-05-18 | Nguyễn Ngọc Toản; Nguyễn Phước; Nguyễn Văn Cương | 72h | 72h | 360 | 360 | 360 |
| 71 | 1.4 | **Kiểm thử** | 8d | 2022-05-19 A | 2022-05-30 A |  | 100% | 2022-05-17 | 2022-05-25 | 7d | 2022-05-19 | 2022-05-27 |  | 168h | 168h | 840 | 800 | 840 |
| 72 | 1.4.1 | **Thực thi kiểm thử** | 7d | 2022-05-19 A | 2022-05-27 A |  | 100% | 2022-05-17 | 2022-05-24 | 6d | 2022-05-19 | 2022-05-26 |  | 152h | 152h | 760 | 720 | 760 |
| 73 | 1.4.1.1 | **Kiểm thử hệ thống** | 3d | 2022-05-19 A | 2022-05-23 A |  | 100% | 2022-05-17 | 2022-05-18 | 2d | 2022-05-19 | 2022-05-20 |  | 88h | 88h | 440 | 400 | 440 |
| 74 | 1.4.1.1.1 | **Kiểm thử các chức năng cơ bản** | 2d | 2022-05-19 A | 2022-05-20 A |  | 100% | 2022-05-17 | 2022-05-17 | 1d | 2022-05-19 | 2022-05-19 |  | 48h | 48h | 240 | 200 | 240 |
| 75 | 1.4.1.1.1.1 | Đăng nhập / Đăng ký | 1d | 2022-05-19 A | 2022-05-19 A | 31 | 100% | 2022-05-17 | 2022-05-17 | 1d | 2022-05-19 | 2022-05-19 | Võ Văn Toán | 8h | 8h | 40 | 40 | 40 |
| 76 | 1.4.1.1.1.2 | Tìm kiếm tour | 2d | 2022-05-19 A | 2022-05-20 A | 31 | 100% | 2022-05-17 | 2022-05-17 | 1d | 2022-05-19 | 2022-05-19 | Lê Thị Đinh | 16h | 16h | 80 | 40 | 80 |
| 77 | 1.4.1.1.1.3 | Đặt tour du lịch | 1d | 2022-05-19 A | 2022-05-19 A | 31 | 100% | 2022-05-17 | 2022-05-17 | 1d | 2022-05-19 | 2022-05-19 | Nguyễn Ngọc Toản | 8h | 8h | 40 | 40 | 40 |
| 78 | 1.4.1.1.1.4 | Đặt phòng khách sạn | 1d | 2022-05-19 A | 2022-05-19 A | 31 | 100% | 2022-05-17 | 2022-05-17 | 1d | 2022-05-19 | 2022-05-19 | Nguyễn Văn Cương | 8h | 8h | 40 | 40 | 40 |
| 79 | 1.4.1.1.1.5 | Travel trips | 1d | 2022-05-19 A | 2022-05-19 A | 31 | 100% | 2022-05-17 | 2022-05-17 | 1d | 2022-05-19 | 2022-05-19 | Nguyễn Phước | 8h | 8h | 40 | 40 | 40 |

| ID | WBS | Task | Duration | Start | Finish | Predecessors | Complete | Baseline start | Baseline finish | Baseline duration | Baseline 1 start | Baseline 1 finish | Resources | Work | Actual work | Cost | Baseline cost | Actual cost |
| --- | --- | --- | --- | --- | --- | --- | --- | --- | --- | --- | --- | --- | --- | --- | --- | --- | --- | --- |
| 80 | 1.4.1.1.2 | **Kiểm thử chức năng quản lý** | 1d | 2022-05-23 A | 2022-05-23 A |  | 100% | 2022-05-18 | 2022-05-18 | 1d | 2022-05-20 | 2022-05-20 |  | 40h | 40h | 200 | 200 | 200 |
| 81 | 1.4.1.1.2.1 | Quản lý Blog | 1d | 2022-05-23 A | 2022-05-23 A | 74 | 100% | 2022-05-18 | 2022-05-18 | 1d | 2022-05-20 | 2022-05-20 | Nguyễn Thị Linh | 8h | 8h | 40 | 40 | 40 |
| 82 | 1.4.1.1.2.2 | Quản lý comment | 1d | 2022-05-23 A | 2022-05-23 A | 74 | 100% | 2022-05-18 | 2022-05-18 | 1d | 2022-05-20 | 2022-05-20 | Nguyễn Văn Cương | 8h | 8h | 40 | 40 | 40 |
| 83 | 1.4.1.1.2.3 | Quản lý phòng | 1d | 2022-05-23 A | 2022-05-23 A | 74 | 100% | 2022-05-18 | 2022-05-18 | 1d | 2022-05-20 | 2022-05-20 | Võ Văn Toán | 8h | 8h | 40 | 40 | 40 |
| 84 | 1.4.1.1.2.4 | Quản lý tour | 1d | 2022-05-23 A | 2022-05-23 A | 74 | 100% | 2022-05-18 | 2022-05-18 | 1d | 2022-05-20 | 2022-05-20 | Nguyễn Ngọc Toản | 8h | 8h | 40 | 40 | 40 |
| 85 | 1.4.1.1.2.5 | Quản lý khách sạn | 1d | 2022-05-23 A | 2022-05-23 A | 74 | 100% | 2022-05-18 | 2022-05-18 | 1d | 2022-05-20 | 2022-05-20 | Nguyễn Phước | 8h | 8h | 40 | 40 | 40 |
| 86 | 1.4.1.2 | **Kiểm thử hiệu suất** | 2d | 2022-05-24 A | 2022-05-25 A |  | 100% | 2022-05-19 | 2022-05-20 | 2d | 2022-05-23 | 2022-05-24 |  | 16h | 16h | 80 | 80 | 80 |
| 87 | 1.4.1.2.1 | Xử lý đồng thời | 1d | 2022-05-24 A | 2022-05-24 A | 73 | 100% | 2022-05-19 | 2022-05-19 | 1d | 2022-05-23 | 2022-05-23 | Lê Thị Đinh | 8h | 8h | 40 | 40 | 40 |
| 88 | 1.4.1.2.2 | Xử lý lượng truy cập lớn | 1d | 2022-05-25 A | 2022-05-25 A | 87 | 100% | 2022-05-20 | 2022-05-20 | 1d | 2022-05-24 | 2022-05-24 | Nguyễn Văn Cương | 8h | 8h | 40 | 40 | 40 |
| 89 | 1.4.1.3 | **Kiểm thử sữ chấp nhận của người dùng** | 2d | 2022-05-26 A | 2022-05-27 A |  | 100% | 2022-05-23 | 2022-05-24 | 2d | 2022-05-25 | 2022-05-26 |  | 48h | 48h | 240 | 240 | 240 |
| 90 | 1.4.1.3.1 | Kiểm thử quy trình nghiệp vụ | 2d | 2022-05-26 A | 2022-05-27 A | 86 | 100% | 2022-05-23 | 2022-05-24 | 2d | 2022-05-25 | 2022-05-26 | Võ Văn Toán | 16h | 16h | 80 | 80 | 80 |
| 91 | 1.4.1.3.2 | Kiểm thử chức năng cơ bản | 2d | 2022-05-26 A | 2022-05-27 A | 86 | 100% | 2022-05-23 | 2022-05-24 | 2d | 2022-05-25 | 2022-05-26 | Nguyễn Ngọc Toản | 16h | 16h | 80 | 80 | 80 |
| 92 | 1.4.1.3.3 | Kiểm thử chức năng quản lý | 2d | 2022-05-26 A | 2022-05-27 A | 86 | 100% | 2022-05-23 | 2022-05-24 | 2d | 2022-05-25 | 2022-05-26 | Nguyễn Thị Linh | 16h | 16h | 80 | 80 | 80 |
| 93 | 1.4.2 | **Phân tích lỗi** | 1d | 2022-05-30 A | 2022-05-30 A |  | 100% | 2022-05-25 | 2022-05-25 | 1d | 2022-05-27 | 2022-05-27 |  | 16h | 16h | 80 | 80 | 80 |
| 94 | 1.4.2.1 | Chức năng | 1d | 2022-05-30 A | 2022-05-30 A | 72 | 100% | 2022-05-25 | 2022-05-25 | 1d | 2022-05-27 | 2022-05-27 | Nguyễn Ngọc Toản | 8h | 8h | 40 | 40 | 40 |
| 95 | 1.4.2.2 | Nghiệp vụ | 1d | 2022-05-30 A | 2022-05-30 A | 72 | 100% | 2022-05-25 | 2022-05-25 | 1d | 2022-05-27 | 2022-05-27 | Nguyễn Phước | 8h | 8h | 40 | 40 | 40 |
| 96 | 1.5 | **Triển khai** | 3d | 2022-05-31 A | 2022-06-02 A |  | 100% | 2022-05-26 | 2022-05-30 | 3d | 2022-05-30 | 2022-06-01 |  | 72h | 72h | 3,360 | 3,360 | 520 |
| 97 | 1.5.1 | **Bàn giao** | 3d | 2022-05-31 A | 2022-06-02 A |  | 100% | 2022-05-26 | 2022-05-30 | 3d | 2022-05-30 | 2022-06-01 |  | 72h | 72h | 3,360 | 3,360 | 520 |
| 98 | 1.5.1.1 | Hỗ trợ đào tạo các chức năng quản lý | 2d | 2022-05-31 A | 2022-06-01 A | 71 | 100% | 2022-05-26 | 2022-05-27 | 2d | 2022-05-30 | 2022-05-31 | Nguyễn Phước; Di chuyển [0.1%]; Chỗ ở [0.1%]; Ăn uống [0.1%] | 16h | 16h | 260 | 260 | 80 |
| 99 | 1.5.1.2 | Hỗ trợ đào tạo các chức năng cơ bản | 2d | 2022-05-31 A | 2022-06-01 A | 71 | 100% | 2022-05-26 | 2022-05-27 | 2d | 2022-05-30 | 2022-05-31 | Nguyễn Thị Linh; Di chuyển [0.1%]; Chỗ ở [0.1%]; Ăn uống [0.1%] | 16h | 16h | 1,160 | 1,160 | 80 |
| 100 | 1.5.1.3 | Viết tài liệu hướng dẫn sử dụng | 1d | 2022-05-31 A | 2022-05-31 A | 71 | 100% | 2022-05-26 | 2022-05-26 | 1d | 2022-05-30 | 2022-05-30 | Võ Văn Toán | 8h | 8h | 40 | 40 | 40 |
| 101 | 1.5.1.4 | **Phần cứng** | 1d | 2022-06-01 A | 2022-06-01 A |  | 100% | 2022-05-27 | 2022-05-27 | 1d | 2022-05-31 | 2022-05-31 |  | 8h | 8h | 630 | 630 | 80 |
| 102 | 1.5.1.4.1 | Thiết lập phần cứng cần thiết | 1d | 2022-06-01 A | 2022-06-01 A | 100 | 100% | 2022-05-27 | 2022-05-27 | 1d | 2022-05-31 | 2022-05-31 | Nguyễn Nhựt Hào; Di chuyển [0.1%]; Chỗ ở [0.1%]; Ăn uống [0.1%] | 8h | 8h | 630 | 630 | 80 |
| 103 | 1.5.1.5 | **Phần mềm** | 1d | 2022-06-02 A | 2022-06-02 A |  | 100% | 2022-05-30 | 2022-05-30 | 1d | 2022-06-01 | 2022-06-01 |  | 24h | 24h | 1,270 | 1,270 | 240 |
| 104 | 1.5.1.5.1 | Nhập dữ liệu | 1d | 2022-06-02 A | 2022-06-02 A | 101 | 100% | 2022-05-30 | 2022-05-30 | 1d | 2022-06-01 | 2022-06-01 | Đỗ Hải | 8h | 8h | 80 | 80 | 80 |
| 105 | 1.5.1.5.2 | Cài đặt máy chủ | 1d | 2022-06-02 A | 2022-06-02 A | 101 | 100% | 2022-05-30 | 2022-05-30 | 1d | 2022-06-01 | 2022-06-01 | Nguyễn Nhựt Hào | 8h | 8h | 80 | 80 | 80 |
| 106 | 1.5.1.5.3 | Cài đặt trang web lên máy chủ | 1d | 2022-06-02 A | 2022-06-02 A | 101 | 100% | 2022-05-30 | 2022-05-30 | 1d | 2022-06-01 | 2022-06-01 | Võ Thành Đô; Di chuyển [0.1%]; Ăn uống [0.1%] | 8h | 8h | 1,110 | 1,110 | 80 |
